Schedule from Planner, 2010-06-07 to 2010-11-23.

## Calendars

- Predeterminado: Mon-Fri 08:00-12:00, 13:00-17:00; Sat-Sun off. Exceptions (off unless hours are given): 2010-06-30 to 2010-07-02, 2010-07-05 to 2010-07-06.

## Resources

| Resource |
| --- |
| Eladio |

## Schedule

| ID | WBS | Task | Start | Finish | Predecessors | Complete | Resources | Work |
| --- | --- | --- | --- | --- | --- | --- | --- | --- |
| 1 | 1 | **mygolfcard** | 2010-06-07 | 2010-11-23 |  |  |  | 1036h |
| 2 | 1.1 | Planificación | 2010-06-07 | 2010-06-07 |  | 100% |  | 8h |
| 3 | 1.2 | **Modelo de Datos** | 2010-06-08 | 2010-06-09 | 2 | 100% |  | 36h |
| 4 | 1.2.1 | Log Histórico | 2010-06-08 | 2010-06-09 |  | 100% | Eladio | 12h |
| 5 | 1.2.2 | Perfiles - Permisos | 2010-06-08 | 2010-06-09 |  | 100% | Eladio | 12h |
| 6 | 1.2.3 | Privacidad | 2010-06-08 | 2010-06-09 |  | 100% | Eladio | 12h |
| 7 | 1.3 | **Alcance versión I** | 2010-06-09 | 2010-08-24 | 3 | 75% |  | 416h |
| 8 | 1.3.1 | Log operaciones | 2010-06-09 | 2010-06-10 |  | 100% |  | 8h |
| 9 | 1.3.2 | **Seguridad v.1.0** | 2010-06-10 | 2010-06-14 | 8 | 95% |  | 32h |
| 10 | 1.3.2.1 | Implementación Permisos | 2010-06-10 | 2010-06-14 |  | 90% |  | 16h |
| 11 | 1.3.2.2 | Implementación privacidad (público vs privado) | 2010-06-10 | 2010-06-14 |  | 100% |  | 16h |
| 12 | 1.3.3 | **Courses** | 2010-06-14 | 2010-06-23 | 9 | 85% |  | 64h |
| 13 | 1.3.3.1 | Alta sólo ADMIN | 2010-06-14 | 2010-06-15 |  | 100% |  | 8h |
| 14 | 1.3.3.2 | Galería de Imágenes | 2010-06-15 | 2010-06-16 | 13 | 100% |  | 8h |
| 15 | 1.3.3.3 | Geoposicionaminento fijo | 2010-06-16 | 2010-06-17 | 14 | 100% |  | 8h |
| 16 | 1.3.3.4 | Campos de Madrid | 2010-06-17 | 2010-06-18 | 15 | 15% |  | 8h |
| 17 | 1.3.3.5 | **Revisión CRUD Courses** | 2010-06-18 | 2010-06-23 | 16 | 100% |  | 32h |
| 18 | 1.3.3.5.1 | **Revisión de estilo - FF/IE/OP** | 2010-06-18 | 2010-06-23 |  | 100% |  | 32h |
| 19 | 1.3.3.5.1.1 | NEW - EDIT | 2010-06-18 | 2010-06-21 |  | 100% |  | 8h |
| 20 | 1.3.3.5.1.2 | SHOW | 2010-06-21 | 2010-06-22 | 19 | 100% |  | 8h |
| 21 | 1.3.3.5.1.3 | **INDEX** | 2010-06-22 | 2010-06-23 | 20 | 100% |  | 16h |
| 22 | 1.3.3.5.1.3.1 | Vista por defecto | 2010-06-22 | 2010-06-23 |  | 100% |  | 8h |
| 23 | 1.3.3.5.1.3.2 | Revisar estilos - FF/IE/OP | 2010-06-22 | 2010-06-23 |  | 100% |  | 8h |
| 24 | 1.3.4 | **Matches** | 2010-06-23 | 2010-07-09 | 12 | 100% |  | 56h |
| 25 | 1.3.4.1 | Revisar estilos | 2010-06-23 | 2010-06-24 |  | 100% |  | 8h |
| 26 | 1.3.4.2 | Alta partidos | 2010-06-24 | 2010-06-28 | 25 | 100% |  | 16h |
| 27 | 1.3.4.3 | Alta Tarjeta | 2010-06-28 | 2010-06-29 | 26 | 100% |  | 8h |
| 28 | 1.3.4.4 | Privacidad en visualización | 2010-06-29 | 2010-07-08 | 27, 26 | 100% |  | 16h |
| 29 | 1.3.4.5 | Trasladar el handicap del usuario al partido | 2010-07-08 | 2010-07-09 | 28 | 100% |  | 8h |

| ID | WBS | Task | Start | Finish | Predecessors | Complete | Work |
| --- | --- | --- | --- | --- | --- | --- | --- |
| 30 | 1.3.5 | **Home** | 2010-07-09 | 2010-07-14 | 24 | 100% | 24h |
| 31 | 1.3.5.1 | Revisión de textos | 2010-07-09 | 2010-07-12 |  | 100% | 8h |
| 32 | 1.3.5.2 | Alta nuevos usuarios | 2010-07-12 | 2010-07-14 | 31 | 100% | 16h |
| 33 | 1.3.6 | **Inicio** | 2010-07-14 | 2010-07-19 | 30 | 100% | 24h |
| 34 | 1.3.6.1 | Estilos | 2010-07-14 | 2010-07-15 |  | 100% | 8h |
| 35 | 1.3.6.2 | Revisión textos de ayuda | 2010-07-15 | 2010-07-16 | 34 | 100% | 8h |
| 36 | 1.3.6.3 | Definir opciones finales | 2010-07-16 | 2010-07-19 | 35 | 100% | 8h |
| 37 | 1.3.7 | Menú | 2010-07-19 | 2010-07-20 | 33 | 100% | 8h |
| 38 | 1.3.8 | **Datos Personales** | 2010-07-20 | 2010-07-26 | 37 | 100% | 32h |
| 39 | 1.3.8.1 | Modificación Datos | 2010-07-20 | 2010-07-21 |  | 100% | 8h |
| 40 | 1.3.8.2 | Recuperación password | 2010-07-21 | 2010-07-22 | 39 | 100% | 8h |
| 41 | 1.3.8.3 | Cambio Password | 2010-07-22 | 2010-07-23 | 40 | 100% | 8h |
| 42 | 1.3.8.4 | Amigos | 2010-07-23 | 2010-07-26 | 41 | 100% | 8h |
| 43 | 1.3.9 | **Stats** | 2010-07-26 | 2010-08-05 | 38 | 100% | 64h |
| 44 | 1.3.9.1 | Definir 2-3 básicas | 2010-07-26 | 2010-08-02 |  | 100% | 40h |
| 45 | 1.3.9.2 | Estilos | 2010-08-02 | 2010-08-05 | 44 | 100% | 24h |
| 46 | 1.3.10 | **Revisión final** | 2010-08-05 | 2010-08-24 | 43 |  | 104h |
| 47 | 1.3.10.1 | Revisión CRUD Matches | 2010-08-05 | 2010-08-06 |  |  | 8h |
| 48 | 1.3.10.2 | Revisión modelo de datos | 2010-08-06 | 2010-08-10 | 47 |  | 16h |
| 49 | 1.3.10.3 | Revisión formularios (obligatorios) | 2010-08-10 | 2010-08-12 | 48 |  | 16h |
| 50 | 1.3.10.4 | Revisión presentación tarjeta | 2010-08-12 | 2010-08-13 | 49 | 100% | 8h |
| 51 | 1.3.10.5 | Revisión Estadísticas | 2010-08-13 | 2010-08-18 | 50 |  | 24h |
| 52 | 1.3.10.6 | Revisión LAYOUT FF/OP/IE/CHR | 2010-08-18 | 2010-08-23 | 51 |  | 24h |
| 53 | 1.3.10.7 | Courses - "Switch view" | 2010-08-23 | 2010-08-24 | 52 |  | 8h |

| ID | WBS | Task | Start | Finish | Predecessors | Work |
| --- | --- | --- | --- | --- | --- | --- |
| 54 | 1.4 | **Pruebas** | 2010-08-24 | 2010-09-21 | 7 | 160h |
| 55 | 1.4.1 | Unitarias | 2010-08-24 | 2010-09-07 |  | 80h |
| 56 | 1.4.2 | Funcionales | 2010-09-07 | 2010-09-21 | 55 | 80h |
| 57 | 1.5 | **Alcance versión II** | 2010-09-21 | 2010-11-23 | 54 | 384h |
| 58 | 1.5.1 | **Refactorización** | 2010-09-21 | 2010-09-27 |  | 32h |
| 59 | 1.5.1.1 | Revisión de código | 2010-09-21 | 2010-09-23 |  | 16h |
| 60 | 1.5.1.2 | Eliminación código sobrante | 2010-09-23 | 2010-09-27 | 59 | 16h |
| 61 | 1.5.2 | **Google Maps** | 2010-09-27 | 2010-10-04 | 58 | 40h |
| 62 | 1.5.2.1 | Posicionamiento automático | 2010-09-27 | 2010-09-29 |  | 16h |
| 63 | 1.5.2.2 | "Como llegar" | 2010-09-29 | 2010-10-04 | 62 | 24h |
| 64 | 1.5.3 | **Estadísticas** | 2010-10-04 | 2010-10-11 | 61 | 40h |
| 65 | 1.5.3.1 | Estadísticas Avanzadas - Definir | 2010-10-04 | 2010-10-11 |  | 40h |
| 66 | 1.5.4 | **Handicaps** | 2010-10-11 | 2010-10-14 | 64 | 24h |
| 67 | 1.5.4.1 | Uso de handicaps | 2010-10-11 | 2010-10-14 |  | 24h |
| 68 | 1.5.5 | **Courses** | 2010-10-14 | 2010-11-01 | 66 | 96h |
| 69 | 1.5.5.1 | Alta por parte de Usuarios | 2010-10-14 | 2010-10-21 |  | 40h |
| 70 | 1.5.5.2 | Alta por batch | 2010-10-21 | 2010-10-25 | 69 | 16h |
| 71 | 1.5.5.3 | Valoración con estrellas | 2010-10-25 | 2010-10-27 | 70 | 16h |
| 72 | 1.5.5.4 | Comentarios - ¿Foro? | 2010-10-27 | 2010-11-01 | 71 | 24h |
| 73 | 1.5.6 | **Matches** | 2010-11-01 | 2010-11-04 | 68 | 24h |
| 74 | 1.5.6.1 | Comentarios - ¿Foro? | 2010-11-01 | 2010-11-04 |  | 24h |
| 75 | 1.5.7 | **Sección de Links de interés** | 2010-11-04 | 2010-11-09 | 73 | 24h |
| 76 | 1.5.7.1 | Link a páginas externas | 2010-11-04 | 2010-11-09 |  | 24h |
| 77 | 1.5.8 | Internacionalización - Inglés | 2010-11-09 | 2010-11-23 | 75 | 80h |
| 78 | 1.5.9 | Rediseñar Menú | 2010-09-21 | 2010-09-24 |  | 24h |

| ID | WBS | Task | Start | Finish | Predecessors | Work |
| --- | --- | --- | --- | --- | --- | --- |
| 79 | 1.6 | **Desarrollo móvil** | 2010-06-07 | 2010-06-09 |  | 24h |
| 80 | 1.6.1 | Análisis Funcional | 2010-06-07 | 2010-06-07 |  | 8h |
| 81 | 1.6.2 | Desarrollo IPhone | 2010-06-08 | 2010-06-08 | 80 | 8h |
| 82 | 1.6.3 | Desarrollo Android | 2010-06-09 | 2010-06-09 | 81 | 8h |
